Schedule from MS Project, 2025-03-06 to 2025-05-29, costs in ¥.

## Calendars

- 标准: Mon-Fri 08:00-12:00, 13:00-17:00; Sat-Sun off.

## Resources

| Resource | Rate | Cost per use |
| --- | --- | --- |
| 项目经理 | 200 | 200 |
| 管理人员 | 150 | 150 |
| 部署小组 | 100 | 100 |
| 分析人员 | 200 | 200 |
| 测试人员 | 150 | 150 |
| 培训人员 | 100 | 100 |
| 技术联络人员 | 250 | 250 |
| 后端开发人员 | 250 | 250 |
| 前端开发人员 | 250 | 250 |

## Schedule

| ID | WBS | Task | Duration | Start | Finish | Predecessors | Total slack | Free slack | Constraint | Resources | Work | Cost |
| --- | --- | --- | --- | --- | --- | --- | --- | --- | --- | --- | --- | --- |
| 1 | 1 | **制定项目计划** | 4d | 2025-03-06 08:00 | 2025-03-11 17:00 |  |  |  |  |  | 32h | 6,600 |
| 2 | 1.1 | 确定项目范围和目标 | 32h | 2025-03-06 08:00 | 2025-03-11 17:00 |  | 54.75d | 0d | finish no earlier than 2025-03-11 17:00 | 项目经理 | 32h | 6,600 |
| 3 | 2 | **收集并分析需求** | 11d | 2025-03-12 08:00 | 2025-03-26 17:00 |  |  |  |  |  | 24h | 6,200 |
| 4 | 2.1 | 确认需求收集方式 | 2h | 2025-03-12 08:00 | 2025-03-12 10:00 | 2 | 55.75d | 0d | start no earlier than 2025-03-06 10:00 | 项目经理 | 2h | 600 |
| 5 | 2.2 | 准备需求收集工具 | 2h | 2025-03-12 10:00 | 2025-03-12 12:00 | 4 | 55.75d | 0d | start no earlier than 2025-03-06 13:00 | 管理人员 | 2h | 450 |
| 6 | 2.3 | 收集用户需求 | 4h | 2025-03-12 13:00 | 2025-03-12 17:00 | 5 | 55.75d |  | start no earlier than 2025-03-06 15:00 | 分析人员 | 4h | 1,000 |
| 7 | 2.4 | 确定会议议程 | 2h | 2025-03-12 08:00 | 2025-03-12 10:00 | 2 | 54.75d | 0d | start no earlier than 2025-03-06 10:00 | 项目经理 | 2h | 600 |
| 8 | 2.5 | 准备会议材料 | 2h | 2025-03-12 10:00 | 2025-03-12 12:00 | 7 | 54.75d | 0d | start no earlier than 2025-03-06 13:00 | 管理人员 | 2h | 450 |
| 9 | 2.6 | 主持项目启动会议 | 2h | 2025-03-12 13:00 | 2025-03-12 15:00 | 8 | 54.75d | 0d | start no earlier than 2025-03-06 15:00 | 项目经理 | 2h | 600 |
| 10 | 2.7 | 记录会议要点 | 2h | 2025-03-12 15:00 | 2025-03-12 17:00 | 9 | 54.75d | 0d | start no earlier than 2025-03-07 08:00 | 管理人员 | 2h | 450 |
| 11 | 2.8 | 编写需求文档 | 4h | 2025-03-13 08:00 | 2025-03-13 12:00 | 10 | 54.75d | 0d | start no earlier than 2025-03-07 10:00 | 分析人员 | 4h | 1,000 |
| 12 | 2.9 | 校对需求文档 | 2h | 2025-03-13 13:00 | 2025-03-13 15:00 | 11 | 54.75d | 0d | start no earlier than 2025-03-07 15:00 | 分析人员 | 2h | 600 |
| 13 | 2.10 | 确认文档完整性 | 2h | 2025-03-13 15:00 | 2025-03-13 17:00 | 12 | 54.75d |  | start no earlier than 2025-03-10 08:00 | 管理人员 | 2h | 450 |
| 14 | 3 | **设计** | 10d | 2025-03-27 08:00 | 2025-04-09 17:00 |  |  |  |  |  | 32h | 8,050 |
| 15 | 3.1 | 分析需求，设计系统架构 | 6h | 2025-03-27 08:00 | 2025-03-27 15:00 | 3 | 21d | 0d | start no earlier than 2025-03-10 10:00 | 分析人员 | 6h | 1,400 |
| 16 | 3.2 | 编写架构设计文档 | 4h | 2025-03-27 15:00 | 2025-03-28 17:00 | 15 | 42.5d | 0d | finish no earlier than 2025-03-28 17:00 | 分析人员 | 4h | 1,000 |
| 17 | 3.3 | 制定数据库设计方案 | 4h | 2025-03-31 08:00 | 2025-03-31 12:00 | 16 | 42.5d | 0d | start no earlier than 2025-03-12 13:00 | 分析人员 | 4h | 1,000 |
| 18 | 3.4 | 创建数据库模型 | 4h | 2025-04-01 08:00 | 2025-04-01 12:00 | 17 | 42d | 0d | start no earlier than 2025-04-01 08:00 | 分析人员 | 4h | 1,000 |
| 19 | 3.5 | 确定前端技术栈 | 2h | 2025-03-27 15:00 | 2025-03-27 17:00 | 15 | 21d | 0d | start no earlier than 2025-03-11 08:00 | 技术联络人员 | 2h | 750 |
| 20 | 3.6 | 确定后端技术栈 | 2h | 2025-03-28 08:00 | 2025-03-28 10:00 | 19 | 21d | 0d | start no earlier than 2025-03-11 10:00 | 技术联络人员 | 2h | 750 |
| 21 | 3.7 | 创建系统设计文档 | 6h | 2025-03-28 10:00 | 2025-03-28 17:00 | 20 | 42.5d | 0d | start no earlier than 2025-03-11 13:00 | 分析人员 | 6h | 1,400 |
| 22 | 3.8 | 校对文档内容 | 4h | 2025-03-31 08:00 | 2025-03-31 12:00 | 21 | 42.25d | 0d | start no earlier than 2025-03-12 10:00 | 管理人员 | 4h | 750 |
| 23 | 4 | **审查设计文档** | 1.25d | 2025-03-31 13:00 | 2025-04-01 15:00 | 22 | 41.5d | 22.25d |  | 项目经理 | 18h | 4,800 |
| 24 | 4.1 | 提出修改建议 | 2h | 2025-03-31 13:00 | 2025-03-31 15:00 |  | 42.5d |  | start no earlier than 2025-03-14 08:00 | 分析人员 | 2h | 600 |
| 25 | 4.2 | 安装数据库软件 | 2h | 2025-04-01 13:00 | 2025-04-01 15:00 | 18 | 41.5d |  | start no earlier than 2025-03-13 13:00 | 技术联络人员 | 2h | 750 |
| 26 | 4.3 | 创建数据库结构 | 4h | 2025-03-31 13:00 | 2025-03-31 17:00 | 19 | 42.25d |  | start no earlier than 2025-03-11 10:00 | 后端开发人员 | 4h | 1,250 |

| ID | WBS | Task | Duration | Start | Finish | Predecessors | Total slack | Free slack | Constraint | Resources | Work | Cost |
| --- | --- | --- | --- | --- | --- | --- | --- | --- | --- | --- | --- | --- |
| 27 | 5 | **开发** | 15d | 2025-04-10 08:00 | 2025-04-30 17:00 |  |  |  |  |  | 42h | 12,000 |
| 28 | 5.1 | **开发前端** | 2.5d | 2025-04-10 08:00 | 2025-04-14 12:00 |  | 12.5d |  |  |  | 20h | 6,000 |
| 29 | 5.1.1 | 设计用户界面 | 4h | 2025-04-10 08:00 | 2025-04-10 12:00 | 19 | 12.5d | 0d | start no earlier than 2025-03-11 10:00 | 前端开发人员 | 4h | 1,250 |
| 30 | 5.1.2 | 编写界面原型 | 4h | 2025-04-10 13:00 | 2025-04-10 17:00 | 29 | 12.5d | 0d | start no earlier than 2025-03-11 15:00 | 前端开发人员 | 4h | 1,250 |
| 31 | 5.1.3 | 编码用户界面 | 8h | 2025-04-11 08:00 | 2025-04-11 17:00 | 30 | 12.5d | 0d | start no earlier than 2025-03-12 10:00 | 前端开发人员 | 8h | 2,250 |
| 32 | 5.1.4 | 页面布局调整 | 4h | 2025-04-14 08:00 | 2025-04-14 12:00 | 31 | 12.5d |  | start no earlier than 2025-03-13 10:00 | 前端开发人员 | 4h | 1,250 |
| 33 | 5.2 | **开发后端** | 2.75d | 2025-04-10 08:00 | 2025-04-14 15:00 |  | 12.25d |  |  |  | 22h | 6,000 |
| 34 | 5.2.1 | 设计后端逻辑 | 4h | 2025-04-10 08:00 | 2025-04-10 12:00 | 20 | 12.25d | 0d | start no earlier than 2025-03-11 13:00 | 后端开发人员 | 4h | 1,250 |
| 35 | 5.2.2 | 定接口规范 | 4h | 2025-04-10 13:00 | 2025-04-10 17:00 | 34 | 12.25d | 0d | start no earlier than 2025-03-12 08:00 | 后端开发人员 | 4h | 1,250 |
| 36 | 5.2.3 | 编码后端逻辑 | 10h | 2025-04-11 08:00 | 2025-04-14 10:00 | 35 | 12.25d | 0d | start no earlier than 2025-03-12 13:00 | 后端开发人员 | 10h | 2,750 |
| 37 | 5.2.4 | 接口联调测试 | 4h | 2025-04-14 10:00 | 2025-04-14 15:00 | 36 | 12.25d |  | start no earlier than 2025-03-13 15:00 | 测试人员 | 4h | 750 |
| 38 | 6 | **测试** | 11d | 2025-04-30 08:00 | 2025-05-14 17:00 |  |  |  |  |  | 60h | 13,450 |
| 39 | 6.1 | **单元测试编写** | 0.75d | 2025-04-30 08:00 | 2025-04-30 15:00 |  | 5.75d |  |  |  | 6h | 1,200 |
| 40 | 6.1.1 | 编写单元测试用例 | 4h | 2025-04-30 08:00 | 2025-04-30 12:00 | 29 | 5.75d | 0d | start no earlier than 2025-03-11 15:00 | 测试人员 | 4h | 750 |
| 41 | 6.1.2 | 准备测试数据 | 2h | 2025-04-30 13:00 | 2025-04-30 15:00 | 40 | 5.75d | 0d | start no earlier than 2025-03-12 10:00 | 测试人员 | 2h | 450 |
| 42 | 6.2 | **持续集成和部署** | 0.75d | 2025-05-01 08:00 | 2025-05-01 15:00 |  | 9.25d |  |  |  | 6h | 1,250 |
| 43 | 6.2.1 | 配置持续集成工具 | 2h | 2025-05-01 08:00 | 2025-05-01 10:00 | 27 | 9.25d | 0d | start no earlier than 2025-03-14 10:00 | 技术联络人员 | 2h | 750 |
| 44 | 6.2.2 | 实施持续集成流程 | 4h | 2025-05-01 10:00 | 2025-05-01 15:00 | 43 | 9.25d |  | start no earlier than 2025-03-14 13:00 | 部署小组 | 4h | 500 |
| 45 | 6.3 | **系统集成测试** | 1.25d | 2025-04-30 15:00 | 2025-05-01 17:00 |  | 5.75d |  |  |  | 10h | 1,800 |
| 46 | 6.3.1 | 进行系统集成测试 | 8h | 2025-04-30 15:00 | 2025-05-01 15:00 | 41 | 5.75d | 0d | start no earlier than 2025-03-12 13:00 | 测试人员 | 8h | 1,350 |
| 47 | 6.3.2 | 记录测试结果 | 2h | 2025-05-01 15:00 | 2025-05-01 17:00 | 46 | 5.75d | 0d | start no earlier than 2025-03-13 13:00 | 测试人员 | 2h | 450 |
| 48 | 6.4 | **用户验收测试** | 1.25d | 2025-05-02 08:00 | 2025-05-05 10:00 |  | 5.75d |  |  |  | 10h | 1,800 |
| 49 | 6.4.1 | 进行用户验收测试 | 8h | 2025-05-02 08:00 | 2025-05-02 17:00 | 47 | 5.75d | 0d | start no earlier than 2025-03-13 15:00 | 测试人员 | 8h | 1,350 |
| 50 | 6.4.2 | 集用户反馈 | 2h | 2025-05-05 08:00 | 2025-05-05 10:00 | 49 | 5.75d | 0d | start no earlier than 2025-03-14 15:00 | 测试人员 | 2h | 450 |

| ID | WBS | Task | Duration | Start | Finish | Predecessors | Total slack | Free slack | Constraint | Resources | Work | Cost |
| --- | --- | --- | --- | --- | --- | --- | --- | --- | --- | --- | --- | --- |
| 51 | 6.5 | **系统缺陷修复** | 1d | 2025-05-05 10:00 | 2025-05-06 10:00 |  | 6.75d |  |  |  | 16h | 5,000 |
| 52 | 6.5.1 | 分析测试报告 | 2h | 2025-05-05 10:00 | 2025-05-05 12:00 | 50 | 6.75d | 0d | start no earlier than 2025-03-17 08:00 | 前端开发人员; 后端开发人员 | 4h | 1,500 |
| 53 | 6.5.2 | 修复系统缺陷 | 6h | 2025-05-05 13:00 | 2025-05-06 10:00 | 52 | 6.75d | 0d | start no earlier than 2025-03-17 10:00 | 前端开发人员; 后端开发人员 | 12h | 3,500 |
| 54 | 6.6 | **性能测试** | 0.75d | 2025-05-05 10:00 | 2025-05-05 17:00 |  | 5.75d |  |  |  | 6h | 1,200 |
| 55 | 6.6.1 | 进行性能测试 | 4h | 2025-05-05 10:00 | 2025-05-05 15:00 | 50 | 5.75d | 0d | start no earlier than 2025-03-17 08:00 | 测试人员 | 4h | 750 |
| 56 | 6.6.2 | 分析性能数据 | 2h | 2025-05-05 15:00 | 2025-05-05 17:00 | 55 | 5.75d | 0d | start no earlier than 2025-03-17 13:00 | 测试人员 | 2h | 450 |
| 57 | 6.7 | **安全测试** | 1.25d | 2025-05-06 08:00 | 2025-05-07 10:00 |  | 5.75d |  |  |  | 6h | 1,200 |
| 58 | 6.7.1 | 进行安全测试 | 4h | 2025-05-06 08:00 | 2025-05-06 17:00 | 56 | 5.75d | 0d | start no earlier than 2025-03-17 15:00 | 测试人员 | 4h | 750 |
| 59 | 6.7.2 | 提出安全建议 | 2h | 2025-05-07 08:00 | 2025-05-07 10:00 | 58 | 5.75d |  | start no earlier than 2025-03-18 15:00 | 测试人员 | 2h | 450 |
| 60 | 7 | **文档** | 11d | 2025-05-01 08:00 | 2025-05-15 17:00 |  |  |  |  |  | 18h | 4,450 |
| 61 | 7.1 | 编写用户操作手册 | 4h | 2025-05-01 08:00 | 2025-05-01 12:00 | 27 | 9.75d | 0d | start no earlier than 2025-03-14 10:00 | 管理人员 | 4h | 750 |
| 62 | 7.2 | 整理使用说明 | 2h | 2025-05-01 13:00 | 2025-05-01 15:00 | 61 | 9.75d | 0d | start no earlier than 2025-03-14 15:00 | 管理人员 | 2h | 450 |
| 63 | 7.3 | 编写技术架构文档 | 4h | 2025-05-02 08:00 | 2025-05-02 12:00 | 23 | 19.25d |  | start no earlier than 2025-05-02 08:00 | 分析人员 | 4h | 1,000 |
| 64 | 7.4 | 整理代码文档 | 2h | 2025-05-06 10:00 | 2025-05-06 12:00 | 53 | 17.25d |  | start no earlier than 2025-03-18 08:00 | 前端开发人员; 后端开发人员 | 4h | 1,500 |
| 65 | 7.5 | **sa** | 0.5d | 2025-05-01 15:00 | 2025-05-02 10:00 |  | 9.75d |  |  |  | 4h | 750 |
| 66 | 7.5.1 | 编写部署说明文档 | 2h | 2025-05-01 15:00 | 2025-05-01 17:00 | 62 | 9.75d | 0d | start no earlier than 2025-03-17 08:00 | 管理人员 | 2h | 450 |
| 67 | 7.5.2 | 整理部署流程 | 2h | 2025-05-02 08:00 | 2025-05-02 10:00 | 66 | 9.75d |  | start no earlier than 2025-03-17 10:00 | 部署小组 | 2h | 300 |
| 68 | 8 | **培训** | 2d | 2025-05-01 13:00 | 2025-05-05 12:00 |  | 18.25d |  |  |  | 16h | 2,350 |
| 69 | 8.1 | 整理培训内容 | 2h | 2025-05-01 13:00 | 2025-05-01 15:00 | 61 | 18.25d | 0d |  | 培训人员 | 2h | 300 |
| 70 | 8.2 | 制作培训幻灯片 | 2h | 2025-05-01 15:00 | 2025-05-01 17:00 | 69 | 18.25d | 0d |  | 培训人员 | 2h | 300 |
| 71 | 8.3 | **进行管理员培训** | 0.75d | 2025-05-02 08:00 | 2025-05-02 15:00 |  | 18.25d |  |  |  | 6h | 800 |
| 72 | 8.3.1 | 进行管理员培训 | 4h | 2025-05-02 08:00 | 2025-05-02 12:00 | 70 | 18.25d | 0d |  | 培训人员 | 4h | 500 |
| 73 | 8.3.2 | 收集反馈意见 | 2h | 2025-05-02 13:00 | 2025-05-02 15:00 | 72 | 18.25d | 0d |  | 培训人员 | 2h | 300 |
| 74 | 8.4 | **进行用户培训** | 0.75d | 2025-05-02 15:00 | 2025-05-05 12:00 |  | 18.25d |  |  |  | 6h | 950 |
| 75 | 8.4.1 | 进行用户培训 | 4h | 2025-05-02 15:00 | 2025-05-05 10:00 | 73 | 18.25d | 0d |  | 培训人员 | 4h | 500 |
| 76 | 8.4.2 | 整理培训记录 | 2h | 2025-05-05 10:00 | 2025-05-05 12:00 | 75 | 18.25d |  |  | 管理人员 | 2h | 450 |

| ID | WBS | Task | Duration | Start | Finish | Predecessors | Total slack | Free slack | Resources | Work | Cost |
| --- | --- | --- | --- | --- | --- | --- | --- | --- | --- | --- | --- |
| 77 | 9 | **系统部署** | 10.25d | 2025-05-15 08:00 | 2025-05-29 10:00 |  |  |  |  | 18h | 2,950 |
| 78 | 9.1 | 部署系统到生产环境 | 4h | 2025-05-15 08:00 | 2025-05-15 17:00 | 27 | 6.75d | 0.75d | 部署小组 | 4h | 500 |
| 79 | 9.2 | 验证部署结果 | 2h | 2025-05-19 08:00 | 2025-05-19 10:00 | 78 | 8d |  | 部署小组 | 2h | 300 |
| 80 | 9.3 | 确保系统稳定性 | 4h | 2025-05-15 08:00 | 2025-05-15 12:00 | 45 | 9.75d |  | 部署小组 | 4h | 500 |
| 81 | 9.4 | 进行安全审查 | 0.25d | 2025-05-15 08:00 | 2025-05-15 10:00 | 38 | 10d |  | 管理人员 | 2h | 450 |
| 82 | 9.5 | 进行系统测试 | 4h | 2025-05-19 08:00 | 2025-05-19 12:00 | 61 | 7.75d |  | 测试人员 | 4h | 750 |
| 83 | 9.6 | 验证系统功能 | 2h | 2025-05-19 08:00 | 2025-05-19 10:00 | 62 | 8d |  | 测试人员 | 2h | 450 |
| 84 | 10 | **项目交付和上线** | 0.5d | 2025-05-29 10:00 | 2025-05-29 15:00 |  | 0d |  |  | 4h | 1,200 |
| 85 | 10.1 | 完成项目交付和上线 | 2h | 2025-05-29 10:00 | 2025-05-29 12:00 | 77 | 0d |  | 项目经理 | 2h | 600 |
| 86 | 10.2 | 宣布项目上线 | 2h | 2025-05-29 13:00 | 2025-05-29 15:00 | 85 | 0d |  | 项目经理 | 2h | 600 |
